# Wilson International Bid

Schedule from MS Project, 2008-12-01 to 2009-01-22, costs in $.
Bid
OzBuild Pty Ltd
RQ (Request for Quote) from WIlson International

## Calendars

- Standard: Mon-Fri 08:00-12:00, 13:00-17:00; Sat-Sun off. Exceptions (off unless hours are given): 2008-12-25 to 2008-12-26, 2009-01-01.
- 6 Day Working Week: Mon-Sat 08:00-12:00, 13:00-17:00; Sun off. Exceptions (off unless hours are given): 2008-12-25 to 2008-12-26, 2009-01-01.

## Resources

| Resource | Group | Unit | Rate |
| --- | --- | --- | --- |
| Clerical Support | Office |  | 50 |
| Sales Engineer | Office |  | 80 |
| Scheduler | Office |  | 60 |
| Systems Engineer | Office |  | 80 |
| Bid Manager | Office |  | 100 |
| Report Binding |  | Each Folder | 90 |
| Contract Consultant | Consultants |  |  |

## Schedule

| ID | WBS | Task | Type | Duration | Start | Finish | Predecessors | Total slack | Free slack | Constraint | Calendar | Resources | Work | Cost |
| --- | --- | --- | --- | --- | --- | --- | --- | --- | --- | --- | --- | --- | --- | --- |
| 1 | 1 | **OzBuild Bid** |  | 36d | 2008-12-01 | 2009-01-22 |  | 0d |  |  |  |  | 616h | 49,870 |
| 2 | 1.1 | **Research** |  | 9d | 2008-12-01 | 2008-12-11 |  | 8d |  |  |  |  | 152h | 12,320 |
| 3 | 1.1.1 | Bid Request Documents Received | milestone | 0d | 2008-12-01 | 2008-12-01 |  | 8d | 0d |  |  |  |  |  |
| 4 | 1.1.2 | Bid Strategy |  | 1d | 2008-12-01 | 2008-12-01 | 3 | 8d | 0d |  |  | Sales Engineer; Systems Engineer; Bid Manager | 24h | 2,080 |
| 5 | 1.1.3 | Technical Feasibility Study |  | 8d | 2008-12-02 | 2008-12-11 | 4 | 8d | 0d |  |  | Systems Engineer [200%] | 128h | 10,240 |
| 6 | 1.2 | **Estimate** |  | 17d | 2008-12-12 | 2009-01-08 |  | 0d |  |  |  |  | 280h | 21,760 |
| 7 | 1.2.1 | Installation Requirements |  | 4d | 2008-12-12 | 2008-12-17 | 5 | 11d | 0d |  | 6 Day Working Week | Sales Engineer; Systems Engineer | 64h | 5,120 |
| 8 | 1.2.2 | Supplier Component Bids |  | 3d | 2009-01-02 | 2009-01-06 | 5 | 0d |  | start no earlier than 2009-01-02 |  | Sales Engineer | 24h | 1,920 |
| 9 | 1.2.3 | Project Schedule |  | 4d | 2008-12-18 | 2008-12-23 | 7 | 11d | 9d |  | 6 Day Working Week | Scheduler | 32h | 1,920 |
| 10 | 1.2.4 | Technical Specification |  | 9d | 2008-12-12 | 2008-12-24 | 5 | 8d |  |  |  | Sales Engineer; Systems Engineer | 144h | 11,520 |
| 11 | 1.2.5 | Component Bids Costs |  | 2d | 2009-01-07 | 2009-01-08 | 8 | 0d |  |  |  | Sales Engineer | 16h | 1,280 |
| 12 | 1.3 | **Proposal** |  | 10d | 2009-01-09 | 2009-01-22 |  | 0d |  |  |  |  | 184h | 15,790 |
| 13 | 1.3.1 | Draft Bid Document |  | 3d | 2009-01-09 | 2009-01-13 | 9, 10, 11 | 0d |  |  |  | Clerical Support; Bid Manager; Contract Consultant | 48h | 3,600 |
| 14 | 1.3.2 | Reviewed Draft Bid Document |  | 1d | 2009-01-14 | 2009-01-14 | 13 | 0d |  |  |  | Bid Manager; Sales Engineer; Systems Engineer | 24h | 2,080 |
| 15 | 1.3.3 | Design Validation |  | 1d | 2009-01-15 | 2009-01-15 | 14 | 0d |  |  |  | Bid Manager; Systems Engineer | 16h | 1,440 |
| 16 | 1.3.4 | Revised Bid Document |  | 1d | 2009-01-15 | 2009-01-15 | 14 | 4d |  |  |  | Bid Manager; Clerical Support | 16h | 1,200 |
| 17 | 1.3.5 | Component Packages Negotiated |  | 4d | 2009-01-16 | 2009-01-21 | 15 | 0d |  |  |  | Sales Engineer; Bid Manager; Report Binding [3 Each Folder] | 64h | 6,030 |
| 18 | 1.3.6 | Bid Document Final |  | 1d | 2009-01-22 | 2009-01-22 | 16, 17 | 0d |  |  |  | Bid Manager; Systems Engineer | 16h | 1,440 |
| 19 | 1.3.7 | Bid Submitted | milestone | 0d | 2009-01-22 | 2009-01-22 | 18 | 0d |  | finish no later than 2009-01-22 |  |  |  |  |
