# Software Development

Schedule from MS Project, 2012-12-24 to 2013-05-06, costs in $, A marks actual dates.

## Calendars

- Standard: Mon-Fri 08:00-12:00, 13:00-17:00; Sat-Sun off.

## Resources

| Resource | Rate |
| --- | --- |
| Management | 30 |
| Project Manager | 20 |
| Analyst | 80 |
| Developer | 90 |
| Testers | 100 |
| Trainers | 110 |
| Technical Communicators | 120 |
| Deployment Team | 130 |

## Schedule

| ID | WBS | Task | Type | Duration | Start | Finish | Predecessors | Complete | Remaining | Baseline start | Baseline finish | Baseline duration | Total slack | Free slack | Resources | Work | Actual work | Cost | Baseline cost | Actual cost |
| --- | --- | --- | --- | --- | --- | --- | --- | --- | --- | --- | --- | --- | --- | --- | --- | --- | --- | --- | --- | --- |
| 1 | 1 | **Scope** |  | 3.5d | 2012-12-24 A | 2012-12-27 |  | 30% | 2.45d | 2012-12-24 | 2012-12-27 | 3.5d | 1.5d |  |  | 28h | 8.4h | 680 | 1,560 | 204 |
| 2 | 1.1 | Determine project scope |  | 4h | 2012-12-24 A | 2012-12-24 |  | 30% | 2.8h | 2012-12-24 | 2012-12-24 | 4h | 0.3d | 0d | Management | 4h | 1.2h | 120 | 200 | 36 |
| 3 | 1.2 | Secure project sponsorship |  | 1d | 2012-12-24 A | 2012-12-25 | 2 | 30% | 0.7d | 2012-12-24 | 2012-12-25 | 1d | 0.3d | 0d | Management | 8h | 2.4h | 240 | 400 | 72 |
| 4 | 1.3 | Define preliminary resources |  | 1d | 2012-12-25 A | 2012-12-26 | 3 | 30% | 0.7d | 2012-12-25 | 2012-12-26 | 1d | 0.3d | 0d | Project Manager | 8h | 2.4h | 160 | 480 | 48 |
| 5 | 1.4 | Secure core resources |  | 1d | 2012-12-26 A | 2012-12-27 | 4 | 30% | 0.7d | 2012-12-26 | 2012-12-27 | 1d | 1.5d | 0d | Project Manager | 8h | 2.4h | 160 | 480 | 48 |
| 6 | 1.5 | Scope complete | milestone | 0d | 2012-12-27 A | 2012-12-27 | 5 | 30% | 0d | 2012-12-27 | 2012-12-27 |  | 1.5d | 0d |  |  |  |  |  |  |
| 7 | 2 | **Analysis/Software Requirements** |  | 14d | 2012-12-27 A | 2013-01-16 |  | 30% | 9.8d | 2012-12-27 | 2013-01-16 | 14d | 0.3d |  |  | 120h | 36h | 7,000 | 7,920 | 2,100 |
| 8 | 2.1 | Conduct needs analysis |  | 5d | 2012-12-27 A | 2013-01-03 | 6 | 30% | 3.5d | 2012-12-27 | 2013-01-03 | 5d | 0.9d | 0d | Analyst | 40h | 12h | 3,200 | 2,800 | 960 |
| 9 | 2.2 | Draft preliminary software specifications |  | 3d | 2013-01-03 A | 2013-01-08 | 8 | 30% | 2.1d | 2013-01-03 | 2013-01-08 | 3d | 0.6d | 0d | Analyst | 24h | 7.2h | 1,920 | 1,680 | 576 |
| 10 | 2.3 | Develop preliminary budget |  | 2d | 2013-01-08 A | 2013-01-10 | 9 | 30% | 1.4d | 2013-01-08 | 2013-01-10 | 2d | 0.15d | 0d | Project Manager | 16h | 4.8h | 320 | 960 | 96 |
| 11 | 2.4 | Review software specifications/budget with team |  | 4h | 2013-01-10 A | 2013-01-10 | 10 | 30% | 2.8h | 2013-01-10 | 2013-01-10 | 4h | 0.3d | 0d | Project Manager; Analyst | 8h | 2.4h | 400 | 520 | 120 |
| 12 | 2.5 | Incorporate feedback on software specifications |  | 1d | 2013-01-11 A | 2013-01-11 | 11 | 30% | 0.7d | 2013-01-11 | 2013-01-11 | 1d | 0.3d | 0d | Analyst | 8h | 2.4h | 640 | 560 | 192 |
| 13 | 2.6 | Develop delivery timeline |  | 1d | 2013-01-14 A | 2013-01-14 | 12 | 30% | 0.7d | 2013-01-14 | 2013-01-14 | 1d | 0.15d | 0d | Project Manager | 8h | 2.4h | 160 | 480 | 48 |
| 14 | 2.7 | Obtain approvals to proceed (concept, timeline, budget) |  | 4h | 2013-01-15 A | 2013-01-15 | 13 | 30% | 2.8h | 2013-01-15 | 2013-01-15 | 4h | 0.3d | 0d | Management; Project Manager | 8h | 2.4h | 200 | 440 | 60 |
| 15 | 2.8 | Secure required resources |  | 1d | 2013-01-15 A | 2013-01-16 | 14 | 30% | 0.7d | 2013-01-15 | 2013-01-16 | 1d | 0.3d | 0d | Project Manager | 8h | 2.4h | 160 | 480 | 48 |
| 16 | 2.9 | Analysis complete | milestone | 0d | 2013-01-16 A | 2013-01-16 | 15 | 30% | 0d | 2013-01-16 | 2013-01-16 |  | 0.3d | 0d |  |  |  |  |  |  |
| 17 | 3 | **Design** |  | 14.5d | 2013-01-16 A | 2013-02-05 |  | 30% | 10.15d | 2013-01-16 | 2013-02-05 | 14.5d | 0.3d |  |  | 120h | 36h | 7,960 | 7,800 | 2,388 |
| 18 | 3.1 | Review preliminary software specifications |  | 2d | 2013-01-16 A | 2013-01-18 | 16 | 30% | 1.4d | 2013-01-16 | 2013-01-18 | 2d | 1.5d | 0d | Analyst | 16h | 4.8h | 1,280 | 1,120 | 384 |
| 19 | 3.2 | Develop functional specifications |  | 5d | 2013-01-18 A | 2013-01-25 | 18 | 30% | 3.5d | 2013-01-18 | 2013-01-25 | 5d | 1.2d | 0d | Analyst | 40h | 12h | 3,200 | 2,800 | 960 |
| 20 | 3.3 | Develop prototype based on functional specifications |  | 4d | 2013-01-25 A | 2013-01-31 | 19 | 30% | 2.8d | 2013-01-25 | 2013-01-31 | 4d | 0.6d | 0d | Analyst | 32h | 9.6h | 2,560 | 2,240 | 768 |
| 21 | 3.4 | Review functional specifications |  | 2d | 2013-01-31 A | 2013-02-04 | 20 | 30% | 1.4d | 2013-01-31 | 2013-02-04 | 2d | 0.3d | 0d | Management | 16h | 4.8h | 480 | 800 | 144 |
| 22 | 3.5 | Incorporate feedback into functional specifications |  | 1d | 2013-02-04 A | 2013-02-05 | 21 | 30% | 0.7d | 2013-02-04 | 2013-02-05 | 1d | 0.15d | 0d | Management | 8h | 2.4h | 240 | 400 | 72 |
| 23 | 3.6 | Obtain approval to proceed |  | 4h | 2013-02-05 A | 2013-02-05 | 22 | 30% | 2.8h | 2013-02-05 | 2013-02-05 | 4h | 0.3d | 0d | Management; Project Manager | 8h | 2.4h | 200 | 440 | 60 |
| 24 | 3.7 | Design complete | milestone | 0d | 2013-02-05 A | 2013-02-05 | 23 | 30% | 0d | 2013-02-05 | 2013-02-05 |  | 0.3d | 0d |  |  |  |  |  |  |

| ID | WBS | Task | Type | Duration | Start | Finish | Predecessors | Complete | Remaining | Baseline start | Baseline finish | Baseline duration | Total slack | Free slack | Resources | Work | Actual work | Cost | Baseline cost | Actual cost |
| --- | --- | --- | --- | --- | --- | --- | --- | --- | --- | --- | --- | --- | --- | --- | --- | --- | --- | --- | --- | --- |
| 25 | 4 | **Development** |  | 21.75d | 2013-02-06 A | 2013-03-07 |  | 30% | 15.22d | 2013-02-06 | 2013-03-07 | 21.75d | 1.5d |  |  | 264h | 79.2h | 23,760 | 21,120 | 7,128 |
| 26 | 4.1 | Review functional specifications |  | 1d | 2013-02-06 A | 2013-02-06 | 24 | 30% | 0.7d | 2013-02-06 | 2013-02-06 | 1d | 0.3d | 0d | Developer | 8h | 2.4h | 720 | 640 | 216 |
| 27 | 4.2 | Identify modular/tiered design parameters |  | 1d | 2013-02-07 A | 2013-02-07 | 26 | 30% | 0.7d | 2013-02-07 | 2013-02-07 | 1d | 0.3d | 0d | Developer | 8h | 2.4h | 720 | 640 | 216 |
| 28 | 4.3 | Assign development staff |  | 1d | 2013-02-08 A | 2013-02-08 | 27 | 30% | 0.7d | 2013-02-08 | 2013-02-08 | 1d | 4.5d | 0d | Developer | 8h | 2.4h | 720 | 640 | 216 |
| 29 | 4.4 | Develop code |  | 15d | 2013-02-11 A | 2013-03-01 | 28 | 30% | 10.5d | 2013-02-11 | 2013-03-01 | 15d | 4.5d | 0d | Developer | 120h | 36h | 10,800 | 9,600 | 3,240 |
| 30 | 4.5 | Developer testing (primary debugging) |  | 15d | 2013-02-14 A | 2013-03-07 | 29FS-7.5% | 30% | 10.5d | 2013-02-14 | 2013-03-07 | 15d | 1.5d | 0d | Developer | 120h | 36h | 10,800 | 9,600 | 3,240 |
| 31 | 4.6 | Development complete | milestone | 0d | 2013-03-07 A | 2013-03-07 | 30 | 30% | 0d | 2013-03-07 | 2013-03-07 |  | 1.5d | 0d |  |  |  |  |  |  |
| 32 | 5 | **Testing** |  | 48.75d | 2013-02-06 A | 2013-04-15 |  | 30% | 34.12d | 2013-02-06 | 2013-04-15 | 48.75d | 15d |  |  | 280h | 84h | 28,000 | 25,200 | 8,400 |
| 33 | 5.1 | Develop unit test plans using product specifications |  | 4d | 2013-02-06 A | 2013-02-11 | 24 | 30% | 2.8d | 2013-02-06 | 2013-02-11 | 4d | 19.25d | 17.75d | Testers | 32h | 9.6h | 3,200 | 2,880 | 960 |
| 34 | 5.2 | Develop integration test plans using product specifications |  | 4d | 2013-02-06 A | 2013-02-11 | 24 | 30% | 2.8d | 2013-02-06 | 2013-02-11 | 4d | 59.75d |  | Testers | 32h | 9.6h | 3,200 | 2,880 | 960 |
| 35 | 5.3 | **Unit Testing** |  | 15d | 2013-03-07 A | 2013-03-28 |  | 30% | 10.5d | 2013-03-07 | 2013-03-28 | 15d | 1.5d |  |  | 120h | 36h | 12,000 | 10,800 | 3,600 |
| 36 | 5.3.1 | Review modular code |  | 5d | 2013-03-07 A | 2013-03-14 | 33, 31 | 30% | 3.5d | 2013-03-07 | 2013-03-14 | 5d | 0.6d | 0d | Testers | 40h | 12h | 4,000 | 3,600 | 1,200 |
| 37 | 5.3.2 | Test component modules to product specifications |  | 2d | 2013-03-14 A | 2013-03-18 | 31, 36 | 30% | 1.4d | 2013-03-14 | 2013-03-18 | 2d | 0.9d | 0d | Testers | 16h | 4.8h | 1,600 | 1,440 | 480 |
| 38 | 5.3.3 | Identify anomalies to product specifications |  | 3d | 2013-03-18 A | 2013-03-21 | 37 | 30% | 2.1d | 2013-03-18 | 2013-03-21 | 3d | 0.9d | 0d | Testers | 24h | 7.2h | 2,400 | 2,160 | 720 |
| 39 | 5.3.4 | Modify code |  | 3d | 2013-03-21 A | 2013-03-26 | 38 | 30% | 2.1d | 2013-03-21 | 2013-03-26 | 3d | 0.6d | 0d | Testers | 24h | 7.2h | 2,400 | 2,160 | 720 |
| 40 | 5.3.5 | Re-test modified code |  | 2d | 2013-03-26 A | 2013-03-28 | 39 | 30% | 1.4d | 2013-03-26 | 2013-03-28 | 2d | 1.5d | 0d | Testers | 16h | 4.8h | 1,600 | 1,440 | 480 |
| 41 | 5.3.6 | Unit testing complete | milestone | 0d | 2013-03-28 A | 2013-03-28 | 40 | 30% | 0d | 2013-03-28 | 2013-03-28 |  | 1.5d | 0d |  |  |  |  |  |  |
| 42 | 5.4 | **Integration Testing** |  | 12d | 2013-03-28 A | 2013-04-15 |  | 30% | 8.4d | 2013-03-28 | 2013-04-15 | 12d | 0.3d |  |  | 96h | 28.8h | 9,600 | 8,640 | 2,880 |
| 43 | 5.4.1 | Test module integration |  | 5d | 2013-03-28 A | 2013-04-04 | 41 | 30% | 3.5d | 2013-03-28 | 2013-04-04 | 5d | 0.6d | 0d | Testers | 40h | 12h | 4,000 | 3,600 | 1,200 |
| 44 | 5.4.2 | Identify anomalies to specifications |  | 2d | 2013-04-04 A | 2013-04-08 | 43 | 30% | 1.4d | 2013-04-04 | 2013-04-08 | 2d | 0.9d | 0d | Testers | 16h | 4.8h | 1,600 | 1,440 | 480 |
| 45 | 5.4.3 | Modify code |  | 3d | 2013-04-08 A | 2013-04-11 | 44 | 30% | 2.1d | 2013-04-08 | 2013-04-11 | 3d | 0.6d | 0d | Testers | 24h | 7.2h | 2,400 | 2,160 | 720 |
| 46 | 5.4.4 | Re-test modified code |  | 2d | 2013-04-11 A | 2013-04-15 | 45 | 30% | 1.4d | 2013-04-11 | 2013-04-15 | 2d | 0.3d | 0d | Testers | 16h | 4.8h | 1,600 | 1,440 | 480 |
| 47 | 5.4.5 | Integration testing complete | milestone | 0d | 2013-04-15 A | 2013-04-15 | 46 | 30% | 0d | 2013-04-15 | 2013-04-15 |  | 0.3d | 0d |  |  |  |  |  |  |
| 48 | 6 | **Training** |  | 45.75d | 2013-02-06 A | 2013-04-10 |  | 30% | 32.02d | 2013-02-06 | 2013-04-10 | 45.75d | 3.3d |  |  | 256h | 76.8h | 28,160 | 25,600 | 8,448 |
| 49 | 6.1 | Develop training specifications for end users |  | 3d | 2013-02-06 A | 2013-02-08 | 24 | 30% | 2.1d | 2013-02-06 | 2013-02-08 | 3d | 23.25d | 18.75d | Trainers | 24h | 7.2h | 2,640 | 2,400 | 792 |
| 50 | 6.2 | Develop training specifications for helpdesk support staff |  | 3d | 2013-02-06 A | 2013-02-08 | 24 | 30% | 2.1d | 2013-02-06 | 2013-02-08 | 3d | 23.25d | 18.75d | Trainers | 24h | 7.2h | 2,640 | 2,400 | 792 |
| 51 | 6.3 | Identify training delivery methodology (computer based training, classroom, etc.) |  | 2d | 2013-02-06 A | 2013-02-07 | 24 | 30% | 1.4d | 2013-02-06 | 2013-02-07 | 2d | 24.25d | 19.75d | Trainers | 16h | 4.8h | 1,760 | 1,600 | 528 |
| 52 | 6.4 | Develop training materials |  | 3w | 2013-03-07 A | 2013-03-28 | 49, 31, 50, 51 | 30% | 2.1w | 2013-03-07 | 2013-03-28 | 3w | 1.2d | 0d | Trainers | 120h | 36h | 13,200 | 12,000 | 3,960 |
| 53 | 6.5 | Conduct training usability study |  | 4d | 2013-03-28 A | 2013-04-03 | 52 | 30% | 2.8d | 2013-03-28 | 2013-04-03 | 4d | 0.9d | 0d | Trainers | 32h | 9.6h | 3,520 | 3,200 | 1,056 |
| 54 | 6.6 | Finalize training materials |  | 3d | 2013-04-03 A | 2013-04-08 | 53 | 30% | 2.1d | 2013-04-03 | 2013-04-08 | 3d | 0.6d | 0d | Trainers | 24h | 7.2h | 2,640 | 2,400 | 792 |
| 55 | 6.7 | Develop training delivery mechanism |  | 2d | 2013-04-08 A | 2013-04-10 | 54 | 30% | 1.4d | 2013-04-08 | 2013-04-10 | 2d | 3.3d | 0d | Trainers | 16h | 4.8h | 1,760 | 1,600 | 528 |
| 56 | 6.8 | Training materials complete | milestone | 0d | 2013-04-10 A | 2013-04-10 | 55 | 30% | 0d | 2013-04-10 | 2013-04-10 |  | 3.3d | 3d |  |  |  |  |  |  |

| ID | WBS | Task | Type | Duration | Start | Finish | Predecessors | Complete | Remaining | Baseline start | Baseline finish | Baseline duration | Total slack | Free slack | Resources | Work | Actual work | Cost | Baseline cost | Actual cost |
| --- | --- | --- | --- | --- | --- | --- | --- | --- | --- | --- | --- | --- | --- | --- | --- | --- | --- | --- | --- | --- |
| 57 | 7 | **Documentation** |  | 30.5d | 2013-02-06 A | 2013-03-20 |  | 30% | 21.35d | 2013-02-06 | 2013-03-20 | 30.5d | 18.55d |  |  | 336h | 100.8h | 40,320 | 36,960 | 12,096 |
| 58 | 7.1 | Develop Help specification |  | 1d | 2013-02-06 A | 2013-02-06 | 24 | 30% | 0.7d | 2013-02-06 | 2013-02-06 | 1d | 14d | 9.5d | Technical Communicators | 8h | 2.4h | 960 | 880 | 288 |
| 59 | 7.2 | Develop Help system |  | 3w | 2013-02-20 A | 2013-03-13 | 58, 29FS-5% | 30% | 2.1w | 2013-02-20 | 2013-03-13 | 3w | 0.9d | 0d | Technical Communicators | 120h | 36h | 14,400 | 13,200 | 4,320 |
| 60 | 7.3 | Review Help documentation |  | 3d | 2013-03-13 A | 2013-03-18 | 59 | 30% | 2.1d | 2013-03-13 | 2013-03-18 | 3d | 0.6d | 0d | Technical Communicators | 24h | 7.2h | 2,880 | 2,640 | 864 |
| 61 | 7.4 | Incorporate Help documentation feedback |  | 2d | 2013-03-18 A | 2013-03-20 | 60 | 30% | 1.4d | 2013-03-18 | 2013-03-20 | 2d | 18.55d | 0d | Technical Communicators | 16h | 4.8h | 1,920 | 1,760 | 576 |
| 62 | 7.5 | Develop user manuals specifications |  | 2d | 2013-02-06 A | 2013-02-07 | 24 | 30% | 1.4d | 2013-02-06 | 2013-02-07 | 2d | 13d | 8.5d | Technical Communicators | 16h | 4.8h | 1,920 | 1,760 | 576 |
| 63 | 7.6 | Develop user manuals |  | 3w | 2013-02-20 A | 2013-03-13 | 62, 29FS-5% | 30% | 2.1w | 2013-02-20 | 2013-03-13 | 3w | 0.6d | 0d | Technical Communicators | 120h | 36h | 14,400 | 13,200 | 4,320 |
| 64 | 7.7 | Review all user documentation |  | 2d | 2013-03-13 A | 2013-03-15 | 63 | 30% | 1.4d | 2013-03-13 | 2013-03-15 | 2d | 0.6d | 0d | Technical Communicators | 16h | 4.8h | 1,920 | 1,760 | 576 |
| 65 | 7.8 | Incorporate user documentation feedback |  | 2d | 2013-03-15 A | 2013-03-19 | 64 | 30% | 1.4d | 2013-03-15 | 2013-03-19 | 2d | 19.55d | 1d | Technical Communicators | 16h | 4.8h | 1,920 | 1,760 | 576 |
| 66 | 7.9 | Documentation complete | milestone | 0d | 2013-03-20 A | 2013-03-20 | 65, 61 | 30% | 0d | 2013-03-20 | 2013-03-20 |  | 18.55d | 18.25d |  |  |  |  |  |  |
| 67 | 8 | **Pilot** |  | 70.25d | 2013-01-16 A | 2013-04-24 |  | 30% | 49.17d | 2013-01-16 | 2013-04-24 | 70.25d | 0.3d |  |  | 64h | 19.2h | 7,440 | 7,200 | 2,232 |
| 68 | 8.1 | Identify test group |  | 1d | 2013-01-16 A | 2013-01-17 | 16 | 30% | 0.7d | 2013-01-16 | 2013-01-17 | 1d | 0.3d | 0d | Project Manager | 8h | 2.4h | 160 | 480 | 48 |
| 69 | 8.2 | Develop software delivery mechanism |  | 1d | 2013-01-17 A | 2013-01-18 | 68 | 30% | 0.7d | 2013-01-17 | 2013-01-18 | 1d | 61.55d | 61.25d |  |  |  |  |  |  |
| 70 | 8.3 | Install/deploy software |  | 1d | 2013-04-15 A | 2013-04-16 | 47, 69, 66, 56 | 30% | 0.7d | 2013-04-15 | 2013-04-16 | 1d | 1.5d | 0d | Deployment Team | 8h | 2.4h | 1,040 | 960 | 312 |
| 71 | 8.4 | Obtain user feedback |  | 1w | 2013-04-16 A | 2013-04-23 | 70 | 30% | 0.7w | 2013-04-16 | 2013-04-23 | 1w | 0.3d | 0d | Deployment Team | 40h | 12h | 5,200 | 4,800 | 1,560 |
| 72 | 8.5 | Evaluate testing information |  | 1d | 2013-04-23 A | 2013-04-24 | 71 | 30% | 0.7d | 2013-04-23 | 2013-04-24 | 1d | 0.3d | 0d | Deployment Team | 8h | 2.4h | 1,040 | 960 | 312 |
| 73 | 8.6 | Pilot complete | milestone | 0d | 2013-04-24 A | 2013-04-24 | 72 | 30% | 0d | 2013-04-24 | 2013-04-24 |  | 0.3d | 0d |  |  |  |  |  |  |
| 74 | 9 | **Deployment** |  | 5d | 2013-04-24 A | 2013-05-01 |  | 30% | 3.5d | 2013-04-24 | 2013-05-01 | 5d | 0.3d |  |  | 40h | 12h | 5,200 | 4,800 | 1,560 |
| 75 | 9.1 | Determine final deployment strategy |  | 1d | 2013-04-24 A | 2013-04-25 | 73 | 30% | 0.7d | 2013-04-24 | 2013-04-25 | 1d | 0.3d | 0d | Deployment Team | 8h | 2.4h | 1,040 | 960 | 312 |
| 76 | 9.2 | Develop deployment methodology |  | 1d | 2013-04-25 A | 2013-04-26 | 75 | 30% | 0.7d | 2013-04-25 | 2013-04-26 | 1d | 0.3d | 0d | Deployment Team | 8h | 2.4h | 1,040 | 960 | 312 |
| 77 | 9.3 | Secure deployment resources |  | 1d | 2013-04-26 A | 2013-04-29 | 76 | 30% | 0.7d | 2013-04-26 | 2013-04-29 | 1d | 0.3d | 0d | Deployment Team | 8h | 2.4h | 1,040 | 960 | 312 |
| 78 | 9.4 | Train support staff |  | 1d | 2013-04-29 A | 2013-04-30 | 77 | 30% | 0.7d | 2013-04-29 | 2013-04-30 | 1d | 0.3d | 0d | Deployment Team | 8h | 2.4h | 1,040 | 960 | 312 |
| 79 | 9.5 | Deploy software |  | 1d | 2013-04-30 A | 2013-05-01 | 78 | 30% | 0.7d | 2013-04-30 | 2013-05-01 | 1d | 0.3d | 0d | Deployment Team | 8h | 2.4h | 1,040 | 960 | 312 |
| 80 | 9.6 | Deployment complete | milestone | 0d | 2013-05-01 A | 2013-05-01 | 79 | 30% | 0d | 2013-05-01 | 2013-05-01 |  | 0.3d | 0d |  |  |  |  |  |  |

| ID | WBS | Task | Type | Duration | Start | Finish | Predecessors | Complete | Remaining | Baseline start | Baseline finish | Baseline duration | Total slack | Free slack | Resources | Work | Actual work | Cost | Baseline cost | Actual cost |
| --- | --- | --- | --- | --- | --- | --- | --- | --- | --- | --- | --- | --- | --- | --- | --- | --- | --- | --- | --- | --- |
| 81 | 10 | **Post Implementation Review** |  | 3d | 2013-05-01 A | 2013-05-06 |  | 30% | 2.1d | 2013-05-01 | 2013-05-06 | 3d | 0d |  |  | 24h | 7.2h | 480 | 1,440 | 144 |
| 82 | 10.1 | Document lessons learned |  | 1d | 2013-05-01 A | 2013-05-02 | 80 | 30% | 0.7d | 2013-05-01 | 2013-05-02 | 1d | 0.3d | 0d | Project Manager | 8h | 2.4h | 160 | 480 | 48 |
| 83 | 10.2 | Distribute to team members |  | 1d | 2013-05-02 A | 2013-05-03 | 82 | 30% | 0.7d | 2013-05-02 | 2013-05-03 | 1d | 0.3d | 0d | Project Manager | 8h | 2.4h | 160 | 480 | 48 |
| 84 | 10.3 | Create software maintenance team |  | 1d | 2013-05-03 A | 2013-05-06 | 83 | 30% | 0.7d | 2013-05-03 | 2013-05-06 | 1d | 0d |  | Project Manager | 8h | 2.4h | 160 | 480 | 48 |
| 85 | 10.4 | Post implementation review complete | milestone | 0d | 2013-05-06 A | 2013-05-06 | 84 | 30% | 0d | 2013-05-06 | 2013-05-06 |  | 0d |  |  |  |  |  |  |  |
| 86 | 11 | Software development template complete | milestone | 0d | 2013-05-06 A | 2013-05-06 | 85 | 30% | 0d | 2013-05-06 | 2013-05-06 |  | 0d |  |  |  |  |  |  |  |
