# PROD00266

Schedule from Primavera P6.

## Schedule

| ID | Activity | Type | Duration |
| --- | --- | --- | --- |
| PD1060 | Commercialize New Product | resource dependent | 0d |

# PROD00228

Schedule from Primavera P6.

## Schedule

| ID | Activity | Type | Duration |
| --- | --- | --- | --- |
| PD9005 | Gate 5 - Go to Launch | milestone | 0d |

# Plasma Product Launch

Schedule from Primavera P6, 2012-01-02 to 2012-05-22, data date 2012-01-02.

## Calendars

- Corporate - Standard Full Time: Mon-Fri 08:00-15:59; Sat-Sun off. Exceptions (off unless hours are given): 2012-01-02.

## Schedule

| ID | WBS | Activity | Type | Duration | Start | Finish | Predecessors | Resources | Cost | Type of work | Key Milestones | Enterprise Milestones |
| --- | --- | --- | --- | --- | --- | --- | --- | --- | --- | --- | --- | --- |
|  | 1 | **Scoping Stage** |  |  | 2012-01-02 | 2012-01-20 |  |  |  |  |  |  |
| PD1000 |  | Scope New Product Idea | resource dependent | 15d | 2012-01-02 | 2012-01-20 |  | Product Project Manager [60 h]; Product Manager [90 h]; Lean Six Sigma Specialist [30 h]; Sales [90 h]; Market Manager [30 h] | 30,000 | Planned |  |  |
|  | 2 | **Business Case Stage** |  |  | 2012-01-23 | 2012-02-22 |  |  |  |  |  |  |
| PD1010 |  | Analyze New Product | resource dependent | 8.82d | 2012-01-23 | 2012-02-02 | PD9001 | Product Project Manager [35.29 h]; Product Manager [70.59 h]; Lean Six Sigma Specialist [35.29 h]; Engineer [17.65 h]; Lead Engineer [17.65 h]; Product Analyst [70.59 h]; Market Manager [52.94 h] | 30,000 | Planned |  |  |
| PD1020 |  | Define Business Case | resource dependent | 13.64d | 2012-02-02 | 2012-02-22 | PD1010 | Sales [81.82 h]; Market Manager [109.09 h]; Product Analyst [54.55 h]; Lean Six Sigma Specialist [54.55 h] | 30,000 | Planned |  |  |
|  | 3 | **Development Stage** |  |  | 2012-02-22 | 2012-03-13 |  |  |  |  |  |  |
| PD1030 |  | Design New Product | resource dependent | 8.82d | 2012-02-22 | 2012-03-06 | PD9002 | Lead Engineer [70.59 h]; Engineer [70.59 h]; Product Designer [70.59 h]; Product Analyst [52.94 h]; Product Project Manager [35.29 h] | 30,800 | Planned |  |  |
| PD1040 |  | Develop New Product * | resource dependent | 10d | 2012-02-28 | 2012-03-13 | PD1030 FS-5d | Lean Six Sigma Specialist [40 h]; Product Manager [80 h]; Engineer [80 h]; Product Analyst [60 h]; Product Designer [40 h] | 110,000 | Planned |  |  |
|  | 4 | **Testing and Validation Stage** |  |  | 2012-03-13 | 2012-04-13 |  |  |  |  |  |  |
| PD1050 |  | Test New Product | resource dependent | 23.08d | 2012-03-13 | 2012-04-13 | PD9003 | Product Tester [184.62 h]; Product Manager [46.15 h]; Market Manager [46.15 h]; Product Analyst [138.46 h]; Engineer [184.62 h] | 81,000 | Planned |  |  |
|  | 5 | **Launch Stage** |  |  | 2012-04-13 | 2012-05-22 |  |  |  |  |  |  |
| PD1060 |  | Commercialize New Product | resource dependent | 12.5d | 2012-04-13 | 2012-05-01 | PD1050 | Sales [100 h]; Product Project Manager [50 h]; Product Manager [50 h]; Market Manager [100 h] | 75,000 | Planned |  |  |
| PD1070 |  | Evaluate New Product | resource dependent | 15d | 2012-05-01 | 2012-05-22 | PD9004 | Market Manager [90 h]; Sales [60 h]; Product Tester [30 h]; Lean Six Sigma Specialist [30 h]; Product Project Manager [30 h]; Product Analyst [60 h] | 30,000 | Planned |  |  |
| PD9003 |  | Gate 3 - Go to Development | milestone | 0d | 2012-03-13 | 2012-03-13 | PD1040 |  |  | Planned | Key MS | Design |
| PD9004 |  | Gate 4 - Go to Testing | milestone | 0d | 2012-05-01 | 2012-05-01 | PD1060 |  |  | Planned | Key MS | Build |
| PD9001 |  | Gate 1 - Idea Screen | milestone | 0d | 2012-01-20 | 2012-01-20 | PD1000 |  |  | Planned | Key MS | Kickoff |
| PD9002 |  | Gate 2 - Second Screen | milestone | 0d | 2012-02-22 | 2012-02-22 | PD1020 |  |  | Planned | Key MS |  |
| PD9005 |  | Gate 5 - Go to Launch | milestone | 0d | 2012-05-22 | 2012-05-22 | PD1070 |  |  | Planned | Key MS | Complete |

Notes:
- PD1030: Expenses: Travel expenses for requirements meeting; Conference room facitilies
- PD1040: Steps: Conduct Development Kickoff Meeting; Build Prototype; Get Market Manager Approval for Prototype; Review Development Guidelines; Finalize Technical Specifications; Obtain Signoffs; Prepare for Testing and Validation / Expenses: Product Prototype Expenses; Consulting; Facilities
- PD1050: Expenses: Web Design Consultants
- PD1060: Expenses: HP Server

## Activity codes

| Code | Value | Meaning |
| --- | --- | --- |
| Enterprise Milestones | Build | Build Complete |
| Enterprise Milestones | Complete | Project Completion |
| Enterprise Milestones | Design | Design Complete |
| Enterprise Milestones | Kickoff | Project Kickoff |
| Key Milestones | Key MS | Key Milestones |
| Type of work | Planned | Planned Work |

# Hemaform Program

Schedule from Primavera P6, 2012-01-02 to 2013-06-07, data date 2012-01-02.

## Calendars

- Corporate - Standard Full Time: Mon-Fri 08:00-15:59; Sat-Sun off. Exceptions (off unless hours are given): 2012-01-02, 2012-05-28, 2012-07-04, 2012-09-03, 2012-11-22, 2012-12-25, 2013-01-01, 2013-05-27.

## Schedule

| ID | WBS | Activity | Type | Duration | Start | Finish | Predecessors | Resources | Cost | Type of work | Enterprise Milestones | Key Milestones |
| --- | --- | --- | --- | --- | --- | --- | --- | --- | --- | --- | --- | --- |
|  | 1 | **Scoping Stage** |  |  | 2012-01-02 | 2012-03-15 |  |  |  |  |  |  |
| PD1000 |  | Scope New Product Idea | resource dependent | 53.33d | 2012-01-02 | 2012-03-15 |  | Product Project Manager [213.33 h]; Product Manager [320 h]; Lean Six Sigma Specialist [106.67 h]; Sales [320 h]; Market Manager [106.67 h] | 106,667 | Planned |  |  |
|  | 2 | **Business Case Stage** |  |  | 2012-03-15 | 2012-07-05 |  |  |  |  |  |  |
| PD1010 |  | Analyze New Product | resource dependent | 31.37d | 2012-03-15 | 2012-04-27 | PD9001 | Product Project Manager [125.49 h]; Product Manager [250.98 h]; Lean Six Sigma Specialist [125.49 h]; Engineer [62.75 h]; Lead Engineer [62.75 h]; Product Analyst [250.98 h]; Market Manager [188.24 h] | 106,667 | Planned |  |  |
| PD1020 |  | Define Business Case | resource dependent | 48.49d | 2012-04-27 | 2012-07-05 | PD1010 | Sales [290.91 h]; Market Manager [387.88 h]; Product Analyst [193.94 h]; Lean Six Sigma Specialist [193.94 h] | 106,667 | Planned |  |  |
|  | 3 | **Development Stage** |  |  | 2012-07-05 | 2012-10-01 |  |  |  |  |  |  |
| PD1030 |  | Design New Product | resource dependent | 31.37d | 2012-07-05 | 2012-08-17 | PD9002 | Lead Engineer [250.98 h]; Engineer [250.98 h]; Product Designer [250.98 h]; Product Analyst [188.24 h]; Product Project Manager [125.49 h] | 115,467 | Planned |  |  |
| PD1040 |  | Develop New Product * | resource dependent | 35.56d | 2012-08-10 | 2012-10-01 | PD1030 FS-5d | Lean Six Sigma Specialist [142.22 h]; Product Manager [284.45 h]; Engineer [284.45 h]; Product Analyst [213.33 h]; Product Designer [142.22 h] | 516,667 | Planned |  |  |
|  | 4 | **Testing and Validation Stage** |  |  | 2012-10-01 | 2013-01-23 |  |  |  |  |  |  |
| PD1050 |  | Test New Product | resource dependent | 82.05d | 2012-10-01 | 2013-01-23 | PD9003 | Product Tester [656.41 h]; Product Manager [164.1 h]; Market Manager [164.1 h]; Product Analyst [492.31 h]; Engineer [656.41 h] | 234,333 | Planned |  |  |
|  | 5 | **Launch Stage** |  |  | 2013-01-23 | 2013-06-07 |  |  |  |  |  |  |
| PD1060 |  | Commercialize New Product | resource dependent | 44.44d | 2013-01-23 | 2013-03-26 | PD1050 | Sales [355.56 h]; Product Project Manager [177.78 h]; Product Manager [177.78 h]; Market Manager [355.56 h] | 151,667 | Planned |  |  |
| PD1070 |  | Evaluate New Product | resource dependent | 53.33d | 2013-03-26 | 2013-06-07 | PD9004 | Market Manager [320 h]; Sales [213.33 h]; Product Tester [106.67 h]; Lean Six Sigma Specialist [106.67 h]; Product Project Manager [106.67 h]; Product Analyst [213.33 h] | 106,667 | Planned |  |  |
| PD9003 |  | Gate 3 - Go to Development | milestone | 0d | 2012-10-01 | 2012-10-01 | PD1040 |  |  | Planned | Design | Key MS |
| PD9004 |  | Gate 4 - Go to Testing | milestone | 0d | 2013-03-26 | 2013-03-26 | PD1060 |  |  | Planned | Build | Key MS |
| PD9001 |  | Gate 1 - Idea Screen | milestone | 0d | 2012-03-15 | 2012-03-15 | PD1000 |  |  | Planned | Kickoff | Key MS |
| PD9002 |  | Gate 2 - Second Screen | milestone | 0d | 2012-07-05 | 2012-07-05 | PD1020 |  |  | Planned |  | Key MS |
| PD9005 |  | Gate 5 - Go to Launch | milestone | 0d | 2013-06-07 | 2013-06-07 | PD1070 |  |  | Planned | Complete | Key MS |

Notes:
- PD1030: Expenses: Travel expenses for requirements meeting; Conference room facitilies
- PD1040: Steps: Conduct Development Kickoff Meeting; Build Prototype; Get Market Manager Approval for Prototype; Review Development Guidelines; Finalize Technical Specifications; Obtain Signoffs; Prepare for Testing and Validation / Expenses: Product Prototype Expenses; Consulting; Facilities
- PD1050: Expenses: Web Design Consultants
- PD1060: Expenses: HP Server

## Activity codes

| Code | Value | Meaning |
| --- | --- | --- |
| Enterprise Milestones | Build | Build Complete |
| Enterprise Milestones | Complete | Project Completion |
| Enterprise Milestones | Design | Design Complete |
| Enterprise Milestones | Kickoff | Project Kickoff |
| Key Milestones | Key MS | Key Milestones |
| Type of work | Planned | Planned Work |
