# ?? ??

Schedule from MS Project MPX, 2017-03-02 to 2018-08-10, A marks actual dates.

## Calendars

- DefaultCalendar: Mon-Sun 08:00 am-12:00 pm, 01:00 pm-05:00 pm.

## Resources

| Resource |
| --- |
| 유은지 |

## Schedule

| ID | WBS | Task | Type | Duration | Start | Finish | Predecessors | Complete | Baseline start | Baseline finish |
| --- | --- | --- | --- | --- | --- | --- | --- | --- | --- | --- |
| 1 | 1 | **제품 기획** |  | 190d |  |  |  |  |  |  |
| 2 | 1.1 | 제안 검토 |  | 30d | 2017-03-02 A | 2017-04-12 |  |  | 2017-03-02 | 2017-04-12 |
| 3 | 1.2 | 요구 사항 수집 |  | 50d | 2017-04-13 A | 2017-06-21 | 2 |  | 2017-04-13 | 2017-06-21 |
| 4 | 1.3 | 파트너 협의 |  | 40d | 2017-04-13 A | 2017-06-07 | 2 |  | 2017-04-13 | 2017-06-07 |
| 5 | 1.4 | 파트너 계약 확정 | milestone | 0d | 2017-06-07 A | 2017-06-07 | 4 | 1% | 2017-06-07 | 2017-06-07 |
| 6 | 1.5 | 최종 스펙 정의 |  | 50d | 2017-06-22 A | 2017-08-30 | 3, 5 |  | 2017-06-22 | 2017-08-30 |
| 7 | 1.6 | SW 리스크 분석 |  | 50d | 2017-08-31 A | 2017-11-08 | 6 |  | 2017-08-31 | 2017-11-08 |
| 8 | 1.7 | HW 리스크 분석 |  | 50d | 2017-08-31 A | 2017-11-08 | 6 |  | 2017-08-31 | 2017-11-08 |
| 9 | 1.8 | 착수 회의 |  | 10d | 2017-11-09 A | 2017-11-22 | 7, 8 |  | 2017-11-09 | 2017-11-22 |
| 10 | 1.9 | 분석 완료 | milestone | 0d | 2017-11-22 A | 2017-11-22 | 9 | 1% | 2017-11-22 | 2017-11-22 |
| 11 | 2 | **HW 개발** |  | 165d |  |  |  |  |  |  |
| 12 | 2.1 | 제품 설계 |  | 80d | 2017-11-23 A | 2018-03-14 | 10 |  | 2017-11-23 | 2018-03-14 |
| 13 | 2.2 | 구조 설계 |  | 50d | 2018-03-15 A | 2018-05-23 | 12 |  | 2018-03-15 | 2018-05-23 |
| 14 | 2.3 | PCB 설계 |  | 30d | 2018-05-24 A | 2018-07-04 | 13 |  | 2018-05-24 | 2018-07-04 |
| 15 | 2.4 | 표준 부품 제작 |  | 20d | 2018-05-24 A | 2018-06-20 | 13 |  | 2018-05-24 | 2018-06-20 |
| 16 | 2.5 | 제작 |  | 5d | 2018-07-05 A | 2018-07-11 | 14, 15 |  | 2018-07-05 | 2018-07-11 |
| 17 | 2.6 | HW 완료 | milestone | 0d | 2018-07-11 A | 2018-07-11 | 16 | 1% | 2018-07-11 | 2018-07-11 |
| 18 | 3 | **SW 개발** |  | 55d |  |  |  |  |  |  |
| 19 | 3.1 | 요건 정의 |  | 10d | 2017-11-23 A | 2017-12-06 | 10 |  | 2017-11-23 | 2017-12-06 |
| 20 | 3.2 | 디자인 |  | 5d | 2017-12-07 A | 2017-12-13 | 19 |  | 2017-12-07 | 2017-12-13 |
| 21 | 3.3 | 코딩 |  | 20d | 2017-12-14 A | 2018-01-10 | 20 |  | 2017-12-14 | 2018-01-10 |
| 22 | 3.4 | 디버깅 |  | 20d | 2018-01-11 A | 2018-02-07 | 21 |  | 2018-01-11 | 2018-02-07 |
| 23 | 3.5 | SW 완료 | milestone | 0d | 2018-02-07 A | 2018-02-07 | 22 | 1% | 2018-02-07 | 2018-02-07 |
| 24 | 4 | **테스트** |  | 132d |  |  |  |  |  |  |
| 25 | 4.1 | HW 신뢰성 테스트 |  | 5d | 2018-07-12 A | 2018-07-18 | 17 |  | 2018-07-12 | 2018-07-18 |
| 26 | 4.2 | SW 기능성 테스트 |  | 10d | 2018-02-08 A | 2018-02-21 | 23 |  | 2018-02-08 | 2018-02-21 |
| 27 | 4.3 | 시제품 테스트 |  | 5d | 2018-07-19 A | 2018-07-25 | 25, 26 |  | 2018-07-19 | 2018-07-25 |
| 28 | 4.4 | 경영진 보고 |  | 5d | 2018-07-26 A | 2018-08-01 | 27 |  | 2018-07-26 | 2018-08-01 |
| 29 | 4.5 | 이관 승인 | milestone | 0d | 2018-08-01 A | 2018-08-01 | 28 | 1% | 2018-08-01 | 2018-08-01 |
| 30 | 4.6 | 제품 인도 |  | 3d | 2018-08-08 A | 2018-08-10 | 29FS+4d |  | 2018-08-08 | 2018-08-10 |
| 31 | 4.7 | 프로젝트 종료 | milestone | 0d | 2018-08-10 A | 2018-08-10 | 30 | 1% | 2018-08-10 | 2018-08-10 |
