# Infrastructure Deployment

Schedule from MS Project, 2000-01-03 to 2000-12-19.

## Calendars

- Standard: Mon-Fri 08:00-12:00, 13:00-17:00; Sat-Sun off.

## Resources

| Resource |
| --- |
| Architecture analyst |
| Project management |
| Deployment resources |
| Procurement |
| Management |

## Schedule

| ID | WBS | Task | Type | Duration | Start | Finish | Predecessors | Total slack | Free slack | Resources | Work |
| --- | --- | --- | --- | --- | --- | --- | --- | --- | --- | --- | --- |
| 1 | 1 | **Infrastructure Deployment Template** |  | 251.25d | 2000-01-03 | 2000-12-19 |  | 0d |  |  | 2406h |
| 2 | 1.1 | **Scope** |  | 4d | 2000-01-03 | 2000-01-06 |  | 0d |  |  | 32h |
| 3 | 1.1.1 | Determine project scope |  | 1d | 2000-01-03 | 2000-01-03 |  | 0d |  | Project management | 8h |
| 4 | 1.1.2 | Secure project sponsorship |  | 1d | 2000-01-04 | 2000-01-04 | 3 | 0d |  | Project management | 8h |
| 5 | 1.1.3 | Define preliminary resources |  | 1d | 2000-01-05 | 2000-01-05 | 4 | 0d |  | Project management | 8h |
| 6 | 1.1.4 | Secure core resources |  | 1d | 2000-01-06 | 2000-01-06 | 5 | 0d |  | Project management | 8h |
| 7 | 1.1.5 | Scope complete | milestone | 0d | 2000-01-06 | 2000-01-06 | 6 | 0d |  |  |  |
| 8 | 1.2 | **Analysis** |  | 95d | 2000-01-07 | 2000-05-18 |  | 0d |  |  | 840h |
| 9 | 1.2.1 | **Review Current Infrastructure** |  | 30d | 2000-01-07 | 2000-02-17 |  | 0d |  |  | 240h |
| 10 | 1.2.1.1 | Review hardware environment |  | 5d | 2000-01-07 | 2000-01-13 | 7 | 25d |  | Architecture analyst | 40h |
| 11 | 1.2.1.2 | Review software environment |  | 5d | 2000-01-14 | 2000-01-20 | 7 | 20d |  | Architecture analyst | 40h |
| 12 | 1.2.1.3 | Review communications environment |  | 5d | 2000-01-21 | 2000-01-27 | 7 | 15d |  | Architecture analyst | 40h |
| 13 | 1.2.1.4 | Review connectivity LAN/WAN |  | 5d | 2000-01-28 | 2000-02-03 | 7 | 10d |  | Architecture analyst | 40h |
| 14 | 1.2.1.5 | Review support environment |  | 5d | 2000-02-04 | 2000-02-10 | 7 | 5d |  | Architecture analyst | 40h |
| 15 | 1.2.1.6 | Review geographic factors |  | 5d | 2000-02-11 | 2000-02-17 | 7 | 0d |  | Architecture analyst | 40h |
| 16 | 1.2.1.7 | Review current infrastructure complete | milestone | 0d | 2000-02-17 | 2000-02-17 | 10, 11, 12, 13, 14, 15 | 0d |  |  |  |
| 17 | 1.2.2 | Review business goals/direction/vision |  | 10d | 2000-02-18 | 2000-03-02 | 16 | 0d |  | Project management | 80h |
| 18 | 1.2.3 | **Identify Target Areas for Improvement** |  | 30d | 2000-03-03 | 2000-04-13 |  | 0d |  |  | 240h |
| 19 | 1.2.3.1 | Identify hardware improvements |  | 5d | 2000-03-03 | 2000-03-09 | 17 | 25d |  | Architecture analyst | 40h |
| 20 | 1.2.3.2 | Identify software improvements |  | 5d | 2000-03-10 | 2000-03-16 | 17 | 20d |  | Architecture analyst | 40h |
| 21 | 1.2.3.3 | Identify communications considerations |  | 5d | 2000-03-17 | 2000-03-23 | 17 | 15d |  | Architecture analyst | 40h |
| 22 | 1.2.3.4 | Identify connectivity LAN/WAN improvements/issues |  | 5d | 2000-03-24 | 2000-03-30 | 17 | 10d |  | Architecture analyst | 40h |
| 23 | 1.2.3.5 | Identify support environment improvements/additions |  | 5d | 2000-03-31 | 2000-04-06 | 17 | 5d |  | Architecture analyst | 40h |
| 24 | 1.2.3.6 | Identify mitigation of geographic factors |  | 5d | 2000-04-07 | 2000-04-13 | 17 | 0d |  | Architecture analyst | 40h |
| 25 | 1.2.3.7 | Identify target areas for improvement | milestone | 0d | 2000-04-13 | 2000-04-13 | 19, 20, 21, 22, 23, 24 | 0d |  |  |  |
| 26 | 1.2.4 | Define system requirements |  | 5d | 2000-04-14 | 2000-04-20 | 25 | 15d | 0d | Architecture analyst | 40h |
| 27 | 1.2.5 | Define target performance metrics |  | 5d | 2000-04-21 | 2000-04-27 | 26 | 15d |  | Architecture analyst | 40h |

| ID | WBS | Task | Type | Duration | Start | Finish | Predecessors | Total slack | Resources | Work |
| --- | --- | --- | --- | --- | --- | --- | --- | --- | --- | --- |
| 28 | 1.2.6 | **Review Current Market Solution Vendors** |  | 25d | 2000-04-14 | 2000-05-18 |  | 0d |  | 200h |
| 29 | 1.2.6.1 | Hardware vendors |  | 5d | 2000-04-14 | 2000-04-20 | 25 | 20d | Procurement | 40h |
| 30 | 1.2.6.2 | Software vendors |  | 5d | 2000-04-21 | 2000-04-27 | 25 | 15d | Procurement | 40h |
| 31 | 1.2.6.3 | Communications vendors |  | 5d | 2000-04-28 | 2000-05-04 | 25 | 10d | Procurement | 40h |
| 32 | 1.2.6.4 | Design partners |  | 5d | 2000-05-05 | 2000-05-11 | 25 | 5d | Procurement | 40h |
| 33 | 1.2.6.5 | Implementation partners |  | 5d | 2000-05-12 | 2000-05-18 | 25 | 0d | Procurement | 40h |
| 34 | 1.2.6.6 | Review current market solution vendors complete | milestone | 0d | 2000-05-18 | 2000-05-18 | 29, 30, 31, 32, 33 | 0d |  |  |
| 35 | 1.2.7 | Analysis complete | milestone | 0d | 2000-05-18 | 2000-05-18 | 34, 27 | 0d |  |  |
| 36 | 1.3 | **Design** |  | 67d | 2000-05-19 | 2000-08-21 |  | 0d |  | 648h |
| 37 | 1.3.1 | Secure necessary architectural resources |  | 3d | 2000-05-19 | 2000-05-23 | 35 | 0d | Project management | 24h |
| 38 | 1.3.2 | **Draft Preliminary Infrastructure Design Documents** |  | 25d | 2000-05-24 | 2000-06-27 |  | 0d |  | 200h |
| 39 | 1.3.2.1 | Preliminary hardware design |  | 5d | 2000-05-24 | 2000-05-30 | 37 | 20d | Architecture analyst | 40h |
| 40 | 1.3.2.2 | Preliminary software design |  | 5d | 2000-05-31 | 2000-06-06 | 37 | 15d | Architecture analyst | 40h |
| 41 | 1.3.2.3 | Preliminary communications design |  | 5d | 2000-06-07 | 2000-06-13 | 37 | 10d | Architecture analyst | 40h |
| 42 | 1.3.2.4 | Preliminary connectivity LAN/WAN design |  | 5d | 2000-06-14 | 2000-06-20 | 37 | 5d | Architecture analyst | 40h |
| 43 | 1.3.2.5 | Preliminary support environment design |  | 5d | 2000-06-21 | 2000-06-27 | 37 | 0d | Architecture analyst | 40h |
| 44 | 1.3.2.6 | Draft preliminary infrastructure design document complete | milestone | 0d | 2000-06-27 | 2000-06-27 | 39, 40, 41, 42, 43 | 0d |  |  |
| 45 | 1.3.3 | Review preliminary design documents |  | 2d | 2000-06-28 | 2000-06-29 | 44 | 0d | Project management; Management | 32h |
| 46 | 1.3.4 | Obtain feedback/input on design |  | 2d | 2000-06-30 | 2000-07-03 | 45 | 0d | Project management; Management | 32h |
| 47 | 1.3.5 | **Develop Detailed Infrastructure Design Documents** |  | 25d | 2000-07-04 | 2000-08-07 |  | 0d |  | 200h |
| 48 | 1.3.5.1 | Develop detailed hardware design |  | 5d | 2000-07-04 | 2000-07-10 | 46 | 20d | Architecture analyst | 40h |
| 49 | 1.3.5.2 | Develop detailed software design |  | 5d | 2000-07-11 | 2000-07-17 | 46 | 15d | Architecture analyst | 40h |
| 50 | 1.3.5.3 | Develop detailed communications design |  | 5d | 2000-07-18 | 2000-07-24 | 46 | 10d | Architecture analyst | 40h |
| 51 | 1.3.5.4 | Develop detailed connectivity LAN/WAN design |  | 5d | 2000-07-25 | 2000-07-31 | 46 | 5d | Architecture analyst | 40h |
| 52 | 1.3.5.5 | Develop detailed support environment design |  | 5d | 2000-08-01 | 2000-08-07 | 46 | 0d | Architecture analyst | 40h |
| 53 | 1.3.5.6 | Develop detailed infrastructure design documents complete | milestone | 0d | 2000-08-07 | 2000-08-07 | 48, 49, 50, 51, 52 | 0d |  |  |
| 54 | 1.3.6 | Align long/short term infrastructure design with business goals |  | 10d | 2000-08-08 | 2000-08-21 | 53 | 0d | Architecture analyst; Project management | 160h |
| 55 | 1.3.7 | Design complete | milestone | 0d | 2000-08-21 | 2000-08-21 | 54 | 0d |  |  |

| ID | WBS | Task | Type | Duration | Start | Finish | Predecessors | Total slack | Resources | Work |
| --- | --- | --- | --- | --- | --- | --- | --- | --- | --- | --- |
| 56 | 1.4 | **Budget** |  | 21d | 2000-08-22 | 2000-09-19 |  | 0d |  | 168h |
| 57 | 1.4.1 | Develop budget based on detailed infrastructure documents |  | 5d | 2000-08-22 | 2000-08-28 | 55 | 0d | Project management | 40h |
| 58 | 1.4.2 | Align budget request with business goals |  | 5d | 2000-08-29 | 2000-09-04 | 57FS-5% | 0d | Project management | 40h |
| 59 | 1.4.3 | Align budget request with infrastructure requirements timeline |  | 5d | 2000-09-05 | 2000-09-11 | 58FS-5% | 0d | Project management | 40h |
| 60 | 1.4.4 | Present long/short term budget request |  | 3d | 2000-09-12 | 2000-09-14 | 59 | 0d | Project management | 24h |
| 61 | 1.4.5 | Secure multi-phase/year funding for key initiatives |  | 3d | 2000-09-15 | 2000-09-19 | 60 | 0d | Project management | 24h |
| 62 | 1.4.6 | Budget complete | milestone | 0d | 2000-09-19 | 2000-09-19 | 61 | 0d |  |  |
| 63 | 1.5 | **Finalization/Validation** |  | 17.5d | 2000-09-20 | 2000-10-13 |  | 0d |  | 140h |
| 64 | 1.5.1 | Secure resources based upon approved initiatives |  | 5d | 2000-09-20 | 2000-09-26 | 62 | 0d | Project management | 40h |
| 65 | 1.5.2 | Finalize detailed design based upon budgetary considerations |  | 2d | 2000-09-27 | 2000-09-28 | 64 | 0d | Project management | 16h |
| 66 | 1.5.3 | Develop detailed implementation strategy |  | 5d | 2000-09-29 | 2000-10-05 | 65 | 0d | Deployment resources | 40h |
| 67 | 1.5.4 | Validate implementation strategy in test environment |  | 3d | 2000-10-06 | 2000-10-10 | 66 | 0d | Deployment resources | 24h |
| 68 | 1.5.5 | Review implementation strategy noting other initiatives |  | 2d | 2000-10-11 | 2000-10-12 | 67 | 0d | Deployment resources | 16h |
| 69 | 1.5.6 | Secure approval to proceed |  | 4h | 2000-10-13 | 2000-10-13 | 68 | 0d | Project management | 4h |
| 70 | 1.5.7 | Finalization/validation complete | milestone | 0d | 2000-10-13 | 2000-10-13 | 69 | 0d |  |  |
| 71 | 1.6 | **Deployment** |  | 43.75d | 2000-10-13 | 2000-12-14 |  | 0d |  | 506h |
| 72 | 1.6.1 | **Logistics** |  | 8d | 2000-10-13 | 2000-10-25 |  | 0d |  | 128h |
| 73 | 1.6.1.1 | Secure deployment resources |  | 5d | 2000-10-13 | 2000-10-20 | 70 | 0d | Project management; Deployment resources | 80h |
| 74 | 1.6.1.2 | Train deployment resources in deployment methodology |  | 3d | 2000-10-20 | 2000-10-25 | 73 | 0d | Project management; Deployment resources | 48h |
| 75 | 1.6.1.3 | Logistics complete | milestone | 0d | 2000-10-25 | 2000-10-25 | 74 | 0d |  |  |
| 76 | 1.6.2 | **Pilot** |  | 10.5d | 2000-10-25 | 2000-11-08 |  | 0d |  | 168h |
| 77 | 1.6.2.1 | Select infrastructure component to deploy |  | 1d | 2000-10-25 | 2000-10-26 | 75 | 0d | Project management; Deployment resources | 16h |
| 78 | 1.6.2.2 | Review deployment team tasks and timeline |  | 2d | 2000-10-26 | 2000-10-30 | 77 | 0d | Project management; Deployment resources | 32h |
| 79 | 1.6.2.3 | Communicate impact to community |  | 2h | 2000-10-30 | 2000-10-30 | 78 | 0d | Project management; Deployment resources | 4h |
| 80 | 1.6.2.4 | Deploy infrastructure component |  | 3d | 2000-10-30 | 2000-11-02 | 79 | 0d | Project management; Deployment resources | 48h |
| 81 | 1.6.2.5 | Test infrastructure component |  | 1d | 2000-11-02 | 2000-11-03 | 80 | 0d | Project management; Deployment resources | 16h |
| 82 | 1.6.2.6 | Release to production/operations environment |  | 2h | 2000-11-03 | 2000-11-03 | 81 | 0d | Project management; Deployment resources | 4h |
| 83 | 1.6.2.7 | Obtain feedback |  | 2d | 2000-11-06 | 2000-11-07 | 82 | 0d | Project management; Deployment resources | 32h |
| 84 | 1.6.2.8 | Evaluate pilot feedback |  | 1d | 2000-11-08 | 2000-11-08 | 83 | 0d | Project management; Deployment resources | 16h |
| 85 | 1.6.2.9 | Pilot complete | milestone | 0d | 2000-11-08 | 2000-11-08 | 84 | 0d |  |  |
| 86 | 1.6.3 | Determine readiness to proceed |  | 1d | 2000-11-09 | 2000-11-09 | 85 | 0d | Project management; Management | 16h |

| ID | WBS | Task | Type | Duration | Start | Finish | Predecessors | Total slack | Resources | Work |
| --- | --- | --- | --- | --- | --- | --- | --- | --- | --- | --- |
| 87 | 1.6.4 | **Final Deployment** |  | 24.25d | 2000-11-10 | 2000-12-14 |  | 0d |  | 194h |
| 88 | 1.6.4.1 | Review deployment team tasks and timeline |  | 5d | 2000-11-10 | 2000-11-16 | 86 | 0d | Deployment resources | 40h |
| 89 | 1.6.4.2 | Communicate impact to community |  | 2h | 2000-11-17 | 2000-11-17 | 88 | 0d | Deployment resources | 2h |
| 90 | 1.6.4.3 | Deploy infrastructure components |  | 10d | 2000-11-17 | 2000-12-01 | 89 | 0d | Deployment resources | 80h |
| 91 | 1.6.4.4 | Test infrastructure component |  | 5d | 2000-12-01 | 2000-12-08 | 90 | 0d | Deployment resources | 40h |
| 92 | 1.6.4.5 | Release to production/operations environment |  | 1d | 2000-12-08 | 2000-12-11 | 91 | 0d | Deployment resources | 8h |
| 93 | 1.6.4.6 | Obtain feedback |  | 3d | 2000-12-11 | 2000-12-14 | 92 | 0d | Deployment resources | 24h |
| 94 | 1.6.4.7 | Final deployment complete | milestone | 0d | 2000-12-14 | 2000-12-14 | 93 | 0d |  |  |
| 95 | 1.7 | **Post Implementation Review** |  | 3d | 2000-12-14 | 2000-12-19 |  | 0d |  | 72h |
| 96 | 1.7.1 | Document lessons learned |  | 1d | 2000-12-14 | 2000-12-15 | 94 | 0d | Architecture analyst; Project management; Deployment resources | 24h |
| 97 | 1.7.2 | Distribute to team members |  | 1d | 2000-12-15 | 2000-12-18 | 96 | 0d | Architecture analyst; Project management; Deployment resources | 24h |
| 98 | 1.7.3 | Create software maintenance team |  | 1d | 2000-12-18 | 2000-12-19 | 97 | 0d | Architecture analyst; Project management; Deployment resources | 24h |
| 99 | 1.7.4 | Post implementation review complete | milestone | 0d | 2000-12-19 | 2000-12-19 | 98 | 0d |  |  |
| 100 | 1.8 | Infrastructure deployment template complete | milestone | 0d | 2000-12-19 | 2000-12-19 | 99 | 0d |  |  |
